Schedule from MS Project, 2024-04-01 to 2024-12-16.
Microsoft

## Calendars

- 标准: Mon-Fri 08:00-12:00, 13:00-17:00; Sat-Sun off. Exceptions (off unless hours are given): 2024-04-06 08:00-12:00, 13:00-17:00.

## Resources

| Resource |
| --- |
| 杨昆龙 |
| 张涛 |
| 李静 |
| 王强 |
| 赵磊 |
| 刘洋 |
| 孙伟 |
| 周敏 |
| 吴迪 |
| 陈晨 |
| 郭明 |
| 邓丽 |

## Schedule

| ID | WBS | Task | Type | Duration | Start | Finish | Predecessors | Baseline start | Baseline finish | Baseline duration | Total slack | Free slack | Constraint | Deadline | Resources | Work |
| --- | --- | --- | --- | --- | --- | --- | --- | --- | --- | --- | --- | --- | --- | --- | --- | --- |
| 1 | 1 | **项目启动** |  | 11d | 2024-04-01 | 2024-04-15 |  | 2024-04-01 | 2024-04-15 | 11d |  |  |  | 2024-04-15 |  | 280h |
| 2 | 1.1 | 制定项目章程 |  | 5d | 2024-04-01 | 2024-04-05 |  | 2024-04-01 | 2024-04-05 | 5d | 2d | 0d | finish no earlier than 2024-04-05 |  | 杨昆龙; 张涛; 李静; 孙伟 | 160h |
| 3 | 1.2 | 项目章程批准 | milestone | 0d | 2024-04-05 | 2024-04-06 | 2 | 2024-04-05 | 2024-04-06 | 0d | 6.25d |  |  |  | 杨昆龙; 张涛; 李静; 孙伟 |  |
| 4 | 1.3 | 确定项目范围 |  | 3d | 2024-04-08 | 2024-04-11 | 2 | 2024-04-08 | 2024-04-11 | 3d | 0.88d | 0d | start no earlier than 2024-04-08 |  | 杨昆龙; 张涛; 孙伟 | 72h |
| 5 | 1.4 | 项目范围说明书制定完成 | milestone | 0d | 2024-04-11 | 2024-04-11 | 4 | 2024-04-11 | 2024-04-11 | 0d | 2.88d |  |  |  | 杨昆龙; 张涛; 孙伟 |  |
| 6 | 1.5 | 制定项目管理计划 |  | 2d | 2024-04-11 | 2024-04-15 | 4 | 2024-04-11 | 2024-04-15 | 2d | 0.88d | 0d | start no earlier than 2024-04-11 |  | 杨昆龙; 张涛; 李静 | 48h |
| 7 | 1.6 | 项目管理计划制定完成 | milestone, manual | 0d | 2024-04-15 | 2024-04-15 | 6 | 2024-04-15 | 2024-04-15 | 0d |  |  |  |  | 杨昆龙; 张涛; 李静 |  |
| 8 | 2 | **需求分析** |  | 22d | 2024-04-16 | 2024-05-15 |  | 2024-04-16 | 2024-05-15 | 22d |  |  |  | 2024-05-15 |  | 480h |
| 9 | 2.1 | 收集和分析用户需求 |  | 18d | 2024-04-17 | 2024-05-10 | 6 | 2024-04-17 | 2024-05-10 | 18d | 1d | 0.12d | finish no earlier than 2024-05-10 |  | 杨昆龙; 张涛; 邓丽 | 432h |
| 10 | 2.2 | 编写需求规格说明书 |  | 2d | 2024-05-13 | 2024-05-15 | 9 | 2024-05-13 | 2024-05-15 | 3d | 0.88d | 0d | start no earlier than 2024-05-13 |  | 杨昆龙; 张涛; 邓丽 | 48h |
| 11 | 2.3 | 需求规格说明书完成 | milestone, manual | 0d | 2024-05-15 | 2024-05-15 | 10 |  |  |  |  |  |  |  | 杨昆龙; 张涛; 邓丽 |  |
| 12 | 3 | **系统设计** |  | 22d | 2024-05-16 | 2024-06-14 | 1, 8 | 2024-05-16 | 2024-06-14 | 22d |  |  |  |  |  | 2128h |
| 13 | 3.1 | 设计并实现系统的整体架构 |  | 12d | 2024-05-16 | 2024-06-03 | 1, 8 | 2024-05-16 | 2024-06-03 | 12d | 65.88d | 10d | start no earlier than 2024-05-16 |  | 陈晨; 李静; 王强; 张涛; 赵磊 | 480h |
| 14 | 3.2 | 设计并实现数据库结构 |  | 16d | 2024-05-20 | 2024-06-10 | 1, 8 | 2024-05-20 | 2024-06-10 | 16d | 84d | 14d | finish no earlier than 2024-06-10 |  | 李静; 王强; 张涛; 赵磊; 刘洋; 孙伟 | 768h |
| 15 | 3.3 | 设计用户界面 |  | 22d | 2024-05-16 | 2024-06-14 | 1, 8 | 2024-05-16 | 2024-06-14 | 22d | 80d | 10d | finish no earlier than 2024-06-14 |  | 李静; 王强; 张涛; 赵磊; 陈晨 | 880h |
| 16 | 4 | **开发阶段** |  | 76d | 2024-06-17 | 2024-09-30 | 1, 8, 12 | 2024-06-17 | 2024-09-30 | 76d |  |  |  |  |  | 5000h |
| 17 | 4.1 | 编写系统核心功能代码 |  | 75d | 2024-06-17 | 2024-09-30 | 13 | 2024-06-17 | 2024-09-30 | 75d | 55.88d |  | start no earlier than 2024-06-17 |  | 孙伟; 吴迪; 赵磊; 周敏 | 2400h |
| 18 | 4.2 | 进行单元测试和集成测试 |  | 65d | 2024-07-01 | 2024-09-30 |  | 2024-07-01 | 2024-09-30 | 65d | 55.88d |  | start no earlier than 2024-07-01 |  | 孙伟; 吴迪; 赵磊; 周敏; 郭明 | 2600h |
| 19 | 5 | **测试阶段** |  | 77d | 2024-07-01 | 2024-10-15 | 1, 8, 12 | 2024-07-01 | 2024-10-15 | 77d |  |  |  |  |  | 632h |
| 20 | 5.1 | 制定测试计划 |  | 11d | 2024-07-01 | 2024-07-15 | 13, 14, 15 | 2024-07-01 | 2024-07-15 | 11d | 70d | 59d | finish no earlier than 2024-07-15 |  | 陈晨; 孙伟; 吴迪; 周敏 | 352h |
| 21 | 5.2 | 执行系统测试 |  | 7d | 2024-10-07 | 2024-10-15 | 20 | 2024-10-07 | 2024-10-15 | 7d | 11d | 0d | finish no earlier than 2024-10-15 |  | 陈晨; 孙伟; 吴迪; 周敏; 郭明 | 280h |
| 22 | 6 | **部署阶段** |  | 23d | 2024-10-16 | 2024-11-15 | 1, 8, 12, 16, 19 | 2024-10-16 | 2024-11-15 | 23d |  |  |  |  |  | 608h |
| 23 | 6.1 | 部署系统到生产环境 |  | 12d | 2024-10-16 | 2024-10-31 | 21 | 2024-10-16 | 2024-10-31 | 12d | 11d | 0.12d | finish no earlier than 2024-10-31 |  | 陈晨; 郭明; 周敏 | 288h |
| 24 | 6.2 | 提供用户培训 |  | 10d | 2024-11-01 | 2024-11-15 | 23 | 2024-11-01 | 2024-11-15 | 10d | 10.88d | 0.88d | start no earlier than 2024-11-01 |  | 杨昆龙; 陈晨; 郭明; 周敏 | 320h |

Notes:
- 1: 这是摘要任务。使用摘要任务以帮助您在节中组织项目。
- 13: 在其旁边带有图钉的任务为手动计划任务。当您不想让 Project 移动任务时请使用它们。如果您尚未获得所有信息，您也可以在工期、开始和完成字段输入任意文本或将其保留为空。

| ID | WBS | Task | Duration | Start | Finish | Predecessors | Baseline start | Baseline finish | Baseline duration | Total slack | Constraint | Resources | Work |
| --- | --- | --- | --- | --- | --- | --- | --- | --- | --- | --- | --- | --- | --- |
| 25 | 7 | **项目收尾** | 22d | 2024-11-16 | 2024-12-16 | 1, 8, 12, 16, 19, 22 | 2024-11-16 | 2024-12-16 | 22d |  |  |  | 752h |
| 26 | 7.1 | 编写项目总结报告 | 10d | 2024-11-18 | 2024-11-29 | 1, 8, 12, 16, 19, 22, 24 | 2024-11-18 | 2024-11-29 | 10d | 11d | finish no earlier than 2024-11-29 | 杨昆龙; 邓丽; 张涛; 周敏; 郭明 | 400h |
| 27 | 7.2 | 进行项目审计 | 11d | 2024-12-02 | 2024-12-16 | 1, 8, 12, 16, 19, 22, 24 | 2024-12-02 | 2024-12-16 | 11d | 0d | finish no earlier than 2024-12-16 | 杨昆龙; 邓丽; 张涛; 周敏 | 352h |
